How a schedule from MS Project changed from version to version. A marks actual dates.

## Version 1 (saved 2022-04-12, file rk_task2.mpp)

Note of the change: lrs

| ID | Task | Duration | Start | Finish | Total float |
| --- | --- | --- | --- | --- | --- |
| 1 | Начало проекта | 0d | 2022-04-04 | 2022-04-04 | 20d |
| 2 | Установка ПО | 15d | 2022-04-04 | 2022-04-22 | 5d |
| 3 | Обучение персонала | 20d | 2022-04-04 | 2022-04-29 | 0d |
| 4 | Разработка представительских сайтов | 1d | 2022-04-04 | 2022-04-04 | 19d |
| 5 | Разработка сайта 1 | 5d | 2022-04-04 | 2022-04-08 | 15d |
| 6 | Разработка сайта 2 | 5d | 2022-04-04 | 2022-04-08 | 15d |
| 7 | Представительские сайты созданы | 0d | 2022-04-04 | 2022-04-04 | 20d |
| 8 | Разработка корпоративного сайта | 1d | 2022-04-04 | 2022-04-04 | 19d |
| 9 | Проектирование сайта | 5d | 2022-04-04 | 2022-04-08 | 15d |
| 10 | Разработка сайта | 15d | 2022-04-04 | 2022-04-22 | 5d |
| 11 | Наполнение сайта | 3d | 2022-04-04 | 2022-04-06 | 17d |
| 12 | Тестирование сайта | 5d | 2022-04-04 | 2022-04-08 | 15d |
| 13 | Сдача сайта заказчику | 0d | 2022-04-04 | 2022-04-04 | 20d |

## Version 2 (saved 2022-04-12, file rk_task4.mpp)

Note of the change: lrs

Last finish 2022-04-29 → 2022-06-27 (+59d).

Changed:

| ID | Task | Start | Finish | Duration | Total float | Predecessors |
| --- | --- | --- | --- | --- | --- | --- |
| 2 | Установка ПО | 2022-04-04 → 2022-04-05 (+1d) | 2022-04-22 → 2022-04-25 (+3d) |  | 5d → 0d | none → 1FS+1d |
| 3 | Обучение персонала | 2022-04-04 → 2022-04-19 (+15d) | 2022-04-29 → 2022-05-20 (+21d) |  |  | none → 2SS+10d |
| 4 | **Разработка представительских сайтов** | 2022-04-04 → 2022-05-23 (+49d) | 2022-04-04 → 2022-06-01 (+58d) | 1d → 8d | 19d → 17d | none → 3 |
| 5 | Разработка сайта 1 | 2022-04-04 → 2022-05-23 (+49d) | 2022-04-08 → 2022-05-27 (+49d) |  | 15d → 17d |  |
| 6 | Разработка сайта 2 | 2022-04-04 → 2022-05-26 (+52d) | 2022-04-08 → 2022-06-01 (+54d) |  | 15d → 17d | none → 5FS-2d |
| 7 | Представительские сайты созданы | 2022-04-04 → 2022-06-01 (+58d) | 2022-04-04 → 2022-06-01 (+58d) |  | 20d → 17d | none → 4 |
| 8 | **Разработка корпоративного сайта** | 2022-04-04 → 2022-05-23 (+49d) | 2022-04-04 → 2022-06-27 (+84d) | 1d → 25d | 19d → 0d | none → 3 |
| 9 | Проектирование сайта | 2022-04-04 → 2022-05-23 (+49d) | 2022-04-08 → 2022-05-27 (+49d) |  | 15d → 0d |  |
| 10 | Разработка сайта | 2022-04-04 → 2022-05-30 (+56d) | 2022-04-22 → 2022-06-20 (+59d) |  | 5d → 0d | none → 9 |
| 11 | Наполнение сайта | 2022-04-04 → 2022-06-16 (+73d) | 2022-04-06 → 2022-06-20 (+75d) |  | 17d → 5d | none → 10FS-3d |
| 12 | Тестирование сайта | 2022-04-04 → 2022-06-21 (+78d) | 2022-04-08 → 2022-06-27 (+80d) |  | 15d → 0d | none → 10 |
| 13 | Сдача сайта заказчику | 2022-04-04 → 2022-06-20 (+77d) | 2022-04-04 → 2022-06-20 (+77d) |  | 20d → 5d | none → 11 |

## Version 3 (saved 2022-04-12, file rk_task3.mpp)

Note of the change: lrs

Last finish 2022-06-27 → 2022-04-29 (-59d).

Changed:

| ID | Task | Start | Finish | Duration | Total float | Predecessors |
| --- | --- | --- | --- | --- | --- | --- |
| 2 | Установка ПО | 2022-04-05 → 2022-04-04 (-1d) | 2022-04-25 → 2022-04-22 (-3d) |  | 0d → 5d | 1FS+1d → none |
| 3 | Обучение персонала | 2022-04-19 → 2022-04-04 (-15d) | 2022-05-20 → 2022-04-29 (-21d) |  |  | 2SS+10d → none |
| 4 | **Разработка представительских сайтов** | 2022-05-23 → 2022-04-04 (-49d) | 2022-06-01 → 2022-04-08 (-54d) | 8d → 5d | 17d → 15d | 3 → none |
| 5 | Разработка сайта 1 | 2022-05-23 → 2022-04-04 (-49d) | 2022-05-27 → 2022-04-08 (-49d) |  | 17d → 15d |  |
| 6 | Разработка сайта 2 | 2022-05-26 → 2022-04-04 (-52d) | 2022-06-01 → 2022-04-08 (-54d) |  | 17d → 15d | 5FS-2d → none |
| 7 | Представительские сайты созданы | 2022-06-01 → 2022-04-04 (-58d) | 2022-06-01 → 2022-04-04 (-58d) |  | 17d → 20d | 4 → none |
| 8 | **Разработка корпоративного сайта** | 2022-05-23 → 2022-04-04 (-49d) | 2022-06-27 → 2022-04-22 (-66d) | 25d → 15d | 0d → 5d | 3 → none |
| 9 | Проектирование сайта | 2022-05-23 → 2022-04-04 (-49d) | 2022-05-27 → 2022-04-08 (-49d) |  | 0d → 15d |  |
| 10 | Разработка сайта | 2022-05-30 → 2022-04-04 (-56d) | 2022-06-20 → 2022-04-22 (-59d) |  | 0d → 5d | 9 → none |
| 11 | Наполнение сайта | 2022-06-16 → 2022-04-04 (-73d) | 2022-06-20 → 2022-04-06 (-75d) |  | 5d → 17d | 10FS-3d → none |
| 12 | Тестирование сайта | 2022-06-21 → 2022-04-04 (-78d) | 2022-06-27 → 2022-04-08 (-80d) |  | 0d → 15d | 10 → none |
| 13 | Сдача сайта заказчику | 2022-06-20 → 2022-04-04 (-77d) | 2022-06-20 → 2022-04-04 (-77d) |  | 5d → 20d | 11 → none |

## Version 4 (saved 2022-04-12, file rk_task5.mpp)

Note of the change: lrs

Last finish 2022-04-29 → 2022-06-27 (+59d).

Changed:

| ID | Task | Start | Finish | Duration | Total float | Predecessors |
| --- | --- | --- | --- | --- | --- | --- |
| 2 | Установка ПО | 2022-04-04 → 2022-04-05 (+1d) | 2022-04-22 → 2022-04-25 (+3d) |  | 5d → 0d | none → 1FS+1d |
| 3 | Обучение персонала | 2022-04-04 → 2022-04-19 (+15d) | 2022-04-29 → 2022-05-20 (+21d) |  |  | none → 2SS+10d |
| 4 | **Разработка представительских сайтов** | 2022-04-04 → 2022-05-23 (+49d) | 2022-04-08 → 2022-06-01 (+54d) | 5d → 8d | 15d → 17d | none → 3 |
| 5 | Разработка сайта 1 | 2022-04-04 → 2022-05-23 (+49d) | 2022-04-08 → 2022-05-27 (+49d) |  | 15d → 17d |  |
| 6 | Разработка сайта 2 | 2022-04-04 → 2022-05-26 (+52d) | 2022-04-08 → 2022-06-01 (+54d) |  | 15d → 17d | none → 5FS-2d |
| 7 | Представительские сайты созданы | 2022-04-04 → 2022-06-01 (+58d) | 2022-04-04 → 2022-06-01 (+58d) |  | 20d → 17d | none → 4 |
| 8 | **Разработка корпоративного сайта** | 2022-04-04 → 2022-05-23 (+49d) | 2022-04-22 → 2022-06-27 (+66d) | 15d → 25d | 5d → 0d | none → 3 |
| 9 | Проектирование сайта | 2022-04-04 → 2022-05-23 (+49d) | 2022-04-08 → 2022-05-27 (+49d) |  | 15d → 0d |  |
| 10 | Разработка сайта | 2022-04-04 → 2022-05-30 (+56d) | 2022-04-22 → 2022-06-20 (+59d) |  | 5d → 0d | none → 9 |
| 11 | Наполнение сайта | 2022-04-04 → 2022-06-16 (+73d) | 2022-04-06 → 2022-06-20 (+75d) |  | 17d → 5d | none → 10FS-3d |
| 12 | Тестирование сайта | 2022-04-04 → 2022-06-21 (+78d) | 2022-04-08 → 2022-06-27 (+80d) |  | 15d → 0d | none → 10 |
| 13 | Сдача сайта заказчику | 2022-04-04 → 2022-06-20 (+77d) | 2022-04-04 → 2022-06-20 (+77d) |  | 20d → 5d | none → 11 |

## Version 5 (saved 2022-04-12, file rk_task6.mpp)

Note of the change: lrs

Last finish stays 2022-06-27.

Changed:

| ID | Task | Other |
| --- | --- | --- |
| 2 | Установка ПО | resources none → Программное обеспечение; Соколов |
| 3 | Обучение персонала | resources none → Бумага [1 пач.]; Картриджи для принтера; Кузнецов; Петров; Преподаватели; Соломин; Тимофеев; Яковлева |
| 5 | Разработка сайта 1 | resources none → Кузнецов; Тимофеев |
| 6 | Разработка сайта 2 | resources none → Кузнецов; Тимофеев |
| 9 | Проектирование сайта | resources none → Петров; Соколов |
| 10 | Разработка сайта | resources none → Соломин; Яковлева |
| 11 | Наполнение сайта | resources none → Фомина |
| 12 | Тестирование сайта | resources none → Соломин; Яковлева |

## Version 6 (saved 2022-04-12, file rk_task7.mpp)

Note of the change: lrs

Last finish stays 2022-06-27.

Added:

| ID | Task | Duration | Start | Finish | Predecessors | Resources |
| --- | --- | --- | --- | --- | --- | --- |
| 6 | Разработка дизайна сайта 1 | 2d | 2022-05-23 | 2022-05-24 |  | Кузнецов |
| 7 | Программирование сайта 1 | 3d | 2022-05-25 | 2022-05-27 | 6 | Тимофеев |
| 9 | Разработка дизайна сайта 2 | 2d | 2022-05-26 | 2022-05-27 |  | Кузнецов |
| 10 | Программирование сайта 2 | 3d | 2022-05-30 | 2022-06-01 | 9 | Тимофеев |

Changed:

| ID | Task | Start | Finish | Total float | Predecessors | Other |
| --- | --- | --- | --- | --- | --- | --- |
| 5 | **Разработка сайта 1** |  |  |  |  | resources Кузнецов; Тимофеев → none |
| 8 | **Разработка сайта 2** |  |  |  |  | resources Кузнецов; Тимофеев → none |
| 16 | Тестирование сайта |  |  |  | 14 → 15 |  |
| 17 | Сдача сайта заказчику | 2022-06-20 → 2022-06-27 (+7d) | 2022-06-20 → 2022-06-27 (+7d) | 5d → 0d | 15 → 16 |  |

## Version 7 (saved 2022-04-12, file rk_task8.mpp)

Note of the change: lrs

Last finish 2022-06-27 → 2022-07-04 (+7d).

Added:

| ID | Task | Duration | Start | Finish |
| --- | --- | --- | --- | --- |
| 1 | **Общее** | 61d | 2022-04-04 | 2022-07-04 |

Changed:

| ID | Task | Start | Finish | Duration | Other |
| --- | --- | --- | --- | --- | --- |
| 2 | Начало проекта |  |  |  | baseline start none → 2022-04-04; baseline finish none → 2022-04-04 |
| 3 | Установка ПО |  |  |  | baseline start none → 2022-04-05; baseline finish none → 2022-04-25 |
| 4 | Обучение персонала |  | 2022-05-20 → 2022-05-27 (+7d) | 20d → 25d | constraint none → start no earlier than 2022-04-19; resources Бумага [1 пач.]; Картриджи для принтера; Кузнецов; Петров; Преподаватели; Соломин; Тимофеев; Яковлева → Бумага [1 пач.]; Картриджи для принтера; Кузнецов; Петров; Преподаватели; Соломин; Тимофеев; Яковлева; Соколов; baseline start none → 2022-04-19; baseline finish none → 2022-05-27 |
| 5 | **Разработка представительских сайтов** | 2022-05-23 → 2022-05-30 (+7d) | 2022-06-01 → 2022-06-08 (+7d) |  | baseline start none → 2022-05-30; baseline finish none → 2022-06-08 |
| 6 | **Разработка сайта 1** | 2022-05-23 → 2022-05-30 (+7d) | 2022-05-27 → 2022-06-03 (+7d) |  | baseline start none → 2022-05-30; baseline finish none → 2022-06-03 |
| 7 | Разработка дизайна сайта 1 | 2022-05-23 → 2022-05-30 (+7d) | 2022-05-24 → 2022-05-31 (+7d) |  | baseline start none → 2022-05-30; baseline finish none → 2022-05-31 |
| 8 | Программирование сайта 1 | 2022-05-25 → 2022-06-01 (+7d) | 2022-05-27 → 2022-06-03 (+7d) |  | baseline start none → 2022-06-01; baseline finish none → 2022-06-03 |
| 9 | **Разработка сайта 2** | 2022-05-26 → 2022-06-02 (+7d) | 2022-06-01 → 2022-06-08 (+7d) |  | baseline start none → 2022-06-02; baseline finish none → 2022-06-08 |
| 10 | Разработка дизайна сайта 2 | 2022-05-26 → 2022-06-02 (+7d) | 2022-05-27 → 2022-06-03 (+7d) |  | baseline start none → 2022-06-02; baseline finish none → 2022-06-03 |
| 11 | Программирование сайта 2 | 2022-05-30 → 2022-06-06 (+7d) | 2022-06-01 → 2022-06-08 (+7d) |  | baseline start none → 2022-06-06; baseline finish none → 2022-06-08 |
| 12 | Представительские сайты созданы | 2022-06-01 → 2022-06-08 (+7d) | 2022-06-01 → 2022-06-08 (+7d) |  | baseline start none → 2022-06-08; baseline finish none → 2022-06-08 |
| 13 | **Разработка корпоративного сайта** | 2022-05-23 → 2022-05-30 (+7d) | 2022-06-27 → 2022-07-04 (+7d) |  | baseline start none → 2022-05-30; baseline finish none → 2022-07-04 |
| 14 | Проектирование сайта | 2022-05-23 → 2022-05-30 (+7d) | 2022-05-27 → 2022-06-03 (+7d) |  | baseline start none → 2022-05-30; baseline finish none → 2022-06-03 |
| 15 | Разработка сайта | 2022-05-30 → 2022-06-06 (+7d) | 2022-06-20 → 2022-06-27 (+7d) |  | baseline start none → 2022-06-06; baseline finish none → 2022-06-27 |
| 16 | Наполнение сайта | 2022-06-16 → 2022-06-23 (+7d) | 2022-06-20 → 2022-06-27 (+7d) |  | baseline start none → 2022-06-23; baseline finish none → 2022-06-27 |
| 17 | Тестирование сайта | 2022-06-21 → 2022-06-28 (+7d) | 2022-06-27 → 2022-07-04 (+7d) |  | baseline start none → 2022-06-28; baseline finish none → 2022-07-04 |
| 18 | Сдача сайта заказчику | 2022-06-27 → 2022-07-04 (+7d) | 2022-06-27 → 2022-07-04 (+7d) |  | baseline start none → 2022-07-04; baseline finish none → 2022-07-04 |

## Version 8 (saved 2022-04-12, file rk_task9.mpp)

Note of the change: lrs

Last finish 2022-07-04 → 2022-06-23 (-11d).

Changed:

| ID | Task | Start | Finish | Duration | Other |
| --- | --- | --- | --- | --- | --- |
| 1 | **Общее** |  | 2022-07-04 → 2022-06-23 (-11d) | 61d → 53.5d | baseline finish 2022-07-04 → 2022-06-23 |
| 13 | **Разработка корпоративного сайта** |  | 2022-07-04 → 2022-06-23 (-11d) | 25d → 17.5d | baseline finish 2022-07-04 → 2022-06-23 |
| 15 | Разработка сайта |  | 2022-06-27 → 2022-06-20 (-7d) | 15d → 10d | resources Соломин; Яковлева → Соломин; Яковлева; Соколов; baseline finish 2022-06-27 → 2022-06-20 |
| 16 | Наполнение сайта | 2022-06-23 → 2022-06-16 (-7d) | 2022-06-27 → 2022-06-20 (-7d) |  | baseline start 2022-06-23 → 2022-06-16; baseline finish 2022-06-27 → 2022-06-20 |
| 17 | Тестирование сайта | 2022-06-28 → 2022-06-21 (-7d) | 2022-07-04 → 2022-06-23 (-11d) | 5d → 2.5d | resources Соломин; Яковлева → Соломин; Яковлева; Соколов; Тимофеев; baseline start 2022-06-28 → 2022-06-21; baseline finish 2022-07-04 → 2022-06-23 |
| 18 | Сдача сайта заказчику | 2022-07-04 → 2022-06-23 (-11d) | 2022-07-04 → 2022-06-23 (-11d) |  | baseline start 2022-07-04 → 2022-06-23; baseline finish 2022-07-04 → 2022-06-23 |

## Version 9 (saved 2022-04-12, file rk_task8_2.mpp)

Note of the change: lrs

Last finish 2022-06-23 → 2022-07-22 (+29d).

Changed:

| ID | Task | Start | Finish | Duration | Total float | Other |
| --- | --- | --- | --- | --- | --- | --- |
| 1 | **Общее** |  | 2022-06-23 → 2022-07-22 (+29d) | 53.5d → 74.33d |  | baseline start 2022-04-04 → none; baseline finish 2022-06-23 → none |
| 2 | Начало проекта |  |  |  |  | baseline start 2022-04-04 → none; baseline finish 2022-04-04 → none |
| 3 | Установка ПО |  | 2022-04-25 → 2022-05-13 (+18d) | 15d → 25d |  | baseline start 2022-04-05 → none; baseline finish 2022-04-25 → none |
| 4 | Обучение персонала |  | 2022-05-27 → 2022-06-17 (+21d) | 25d → 38.33d |  | baseline start 2022-04-19 → none; baseline finish 2022-05-27 → none |
| 5 | **Разработка представительских сайтов** | 2022-05-30 → 2022-06-17 (+18d) | 2022-06-08 → 2022-06-29 (+21d) |  | 9.5d → 17d | baseline start 2022-05-30 → none; baseline finish 2022-06-08 → none |
| 6 | **Разработка сайта 1** | 2022-05-30 → 2022-06-17 (+18d) | 2022-06-03 → 2022-06-24 (+21d) |  | 9.5d → 17d | baseline start 2022-05-30 → none; baseline finish 2022-06-03 → none |
| 7 | Разработка дизайна сайта 1 | 2022-05-30 → 2022-06-17 (+18d) | 2022-05-31 → 2022-06-21 (+21d) |  | 9.5d → 17d | baseline start 2022-05-30 → none; baseline finish 2022-05-31 → none |
| 8 | Программирование сайта 1 | 2022-06-01 → 2022-06-21 (+20d) | 2022-06-03 → 2022-06-24 (+21d) |  | 9.5d → 17d | baseline start 2022-06-01 → none; baseline finish 2022-06-03 → none |
| 9 | **Разработка сайта 2** | 2022-06-02 → 2022-06-22 (+20d) | 2022-06-08 → 2022-06-29 (+21d) |  | 9.5d → 17d | baseline start 2022-06-02 → none; baseline finish 2022-06-08 → none |
| 10 | Разработка дизайна сайта 2 | 2022-06-02 → 2022-06-22 (+20d) | 2022-06-03 → 2022-06-24 (+21d) |  | 9.5d → 17d | baseline start 2022-06-02 → none; baseline finish 2022-06-03 → none |
| 11 | Программирование сайта 2 | 2022-06-06 → 2022-06-24 (+18d) | 2022-06-08 → 2022-06-29 (+21d) |  | 9.5d → 17d | baseline start 2022-06-06 → none; baseline finish 2022-06-08 → none |
| 12 | Представительские сайты созданы | 2022-06-08 → 2022-06-29 (+21d) | 2022-06-08 → 2022-06-29 (+21d) |  | 9.5d → 17d | baseline start 2022-06-08 → none; baseline finish 2022-06-08 → none |
| 13 | **Разработка корпоративного сайта** | 2022-05-30 → 2022-06-17 (+18d) | 2022-06-23 → 2022-07-22 (+29d) | 17.5d → 25d |  | baseline start 2022-05-30 → none; baseline finish 2022-06-23 → none |
| 14 | Проектирование сайта | 2022-05-30 → 2022-06-17 (+18d) | 2022-06-03 → 2022-06-24 (+21d) |  |  | baseline start 2022-05-30 → none; baseline finish 2022-06-03 → none |
| 15 | Разработка сайта | 2022-06-06 → 2022-06-24 (+18d) | 2022-06-20 → 2022-07-15 (+25d) | 10d → 15d |  | resources Соломин; Яковлева; Соколов → Соломин; Яковлева; baseline start 2022-06-06 → none; baseline finish 2022-06-20 → none |
| 16 | Наполнение сайта | 2022-06-16 → 2022-07-12 (+26d) | 2022-06-20 → 2022-07-15 (+25d) |  |  | baseline start 2022-06-16 → none; baseline finish 2022-06-20 → none |
| 17 | Тестирование сайта | 2022-06-21 → 2022-07-15 (+24d) | 2022-06-23 → 2022-07-22 (+29d) | 2.5d → 5d |  | resources Соломин; Яковлева; Соколов; Тимофеев → Соломин; Яковлева; baseline start 2022-06-21 → none; baseline finish 2022-06-23 → none |
| 18 | Сдача сайта заказчику | 2022-06-23 → 2022-07-22 (+29d) | 2022-06-23 → 2022-07-22 (+29d) |  |  | baseline start 2022-06-23 → none; baseline finish 2022-06-23 → none |

## Version 10 (data date 2022-06-01, saved 2022-04-12, file rk_task10.mpp)

Note of the change: lrs

Last finish 2022-07-22 → 2022-07-04 (-18d). Complete tasks 0 → 5.

Changed:

| ID | Task | Start | Finish | Duration | Complete | Total float | Other |
| --- | --- | --- | --- | --- | --- | --- | --- |
| 1 | **Общее** | 2022-04-04 A | 2022-07-22 → 2022-07-04 (-18d) | 74.33d → 60.5d | 0% → 71% |  | baseline start none → 2022-04-04; baseline finish none → 2022-06-23 |
| 2 | Начало проекта | 2022-04-04 A | 2022-04-04 A |  | 0% → 100% | 0d → none | baseline start none → 2022-04-04; baseline finish none → 2022-04-04 |
| 3 | Установка ПО | 2022-04-05 A | 2022-05-13 → 2022-04-25 A (-18d) | 25d → 15d | 0% → 100% | 0d → none | baseline start none → 2022-04-05; baseline finish none → 2022-04-25 |
| 4 | Обучение персонала | 2022-04-19 → 2022-04-26 A (+7d) | 2022-06-17 → 2022-05-27 A (-21d) | 38.33d → 20d | 0% → 100% | 0d → none | baseline start none → 2022-04-19; baseline finish none → 2022-05-27 |
| 5 | **Разработка представительских сайтов** | 2022-06-17 → 2022-05-30 A (-18d) | 2022-06-29 → 2022-06-15 (-14d) | 8d → 12d | 0% → 53% | 17d → 12.5d | baseline start none → 2022-05-30; baseline finish none → 2022-06-08 |
| 6 | **Разработка сайта 1** | 2022-06-17 → 2022-05-30 A (-18d) | 2022-06-24 → 2022-06-09 (-15d) | 5d → 9d | 0% → 80% | 17d → 12.5d | baseline start none → 2022-05-30; baseline finish none → 2022-06-03 |
| 7 | Разработка дизайна сайта 1 | 2022-06-17 → 2022-05-30 A (-18d) | 2022-06-21 → 2022-06-07 A (-14d) | 2d → 7d | 0% → 100% | 17d → none | baseline start none → 2022-05-30; baseline finish none → 2022-05-31 |
| 8 | Программирование сайта 1 | 2022-06-21 → 2022-06-01 A (-20d) | 2022-06-24 → 2022-06-09 (-15d) |  | 0% → 33% | 17d → 12.5d | baseline start none → 2022-06-01; baseline finish none → 2022-06-03 |
| 9 | **Разработка сайта 2** | 2022-06-22 → 2022-06-08 (-14d) | 2022-06-29 → 2022-06-15 (-14d) |  |  | 17d → 12.5d | baseline start none → 2022-06-02; baseline finish none → 2022-06-08 |
| 10 | Разработка дизайна сайта 2 | 2022-06-22 → 2022-06-08 (-14d) | 2022-06-24 → 2022-06-09 (-15d) |  |  | 17d → 12.5d | baseline start none → 2022-06-02; baseline finish none → 2022-06-03 |
| 11 | Программирование сайта 2 | 2022-06-24 → 2022-06-10 (-14d) | 2022-06-29 → 2022-06-15 (-14d) |  |  | 17d → 12.5d | baseline start none → 2022-06-06; baseline finish none → 2022-06-08 |
| 12 | Представительские сайты созданы | 2022-06-29 → 2022-06-15 (-14d) | 2022-06-29 → 2022-06-15 (-14d) |  |  | 17d → 12.5d | baseline start none → 2022-06-08; baseline finish none → 2022-06-08 |
| 13 | **Разработка корпоративного сайта** | 2022-06-17 → 2022-05-30 A (-18d) | 2022-07-22 → 2022-07-04 (-18d) | 25d → 24.5d | 0% → 44% |  | baseline start none → 2022-05-30; baseline finish none → 2022-06-23 |
| 14 | Проектирование сайта | 2022-06-17 → 2022-05-30 A (-18d) | 2022-06-24 → 2022-06-15 A (-9d) | 5d → 12d | 0% → 100% | 0d → none | baseline start none → 2022-05-30; baseline finish none → 2022-06-03 |
| 15 | Разработка сайта | 2022-06-24 → 2022-06-16 (-8d) | 2022-07-15 → 2022-06-29 (-16d) | 15d → 10d |  |  | resources Соломин; Яковлева → Соломин; Яковлева; Соколов; baseline start none → 2022-06-06; baseline finish none → 2022-06-20 |
| 16 | Наполнение сайта | 2022-07-12 → 2022-06-27 (-15d) | 2022-07-15 → 2022-06-29 (-16d) |  |  |  | baseline start none → 2022-06-16; baseline finish none → 2022-06-20 |
| 17 | Тестирование сайта | 2022-07-15 → 2022-06-30 (-15d) | 2022-07-22 → 2022-07-04 (-18d) | 5d → 2.5d |  |  | resources Соломин; Яковлева → Соломин; Яковлева; Соколов; Тимофеев; baseline start none → 2022-06-21; baseline finish none → 2022-06-23 |
| 18 | Сдача сайта заказчику | 2022-07-22 → 2022-07-04 (-18d) | 2022-07-22 → 2022-07-04 (-18d) |  |  |  | baseline start none → 2022-06-23; baseline finish none → 2022-06-23 |
